Schedule from MS Project, 2009-11-16 to 2013-09-02.
Microsoft

## Calendars

- 标准: Mon-Fri 08:00-12:00, 13:00-17:00; Sat-Sun off.

## Resources

| Resource |
| --- |
| 张艾燕 |
| 李佳博 |
| 郁青 |
| 钱敏珠 |
| 孙三友 |
| 黄蓓 |
| 惠洪浩 |
| 袁兴堂 |
| 陈麟 |
| 葛昌川 |
| 华明琪 |
| 毛佳源 |
| 强盛凌 |
| 刘天琛 |
| 郑汇慧 |
| 陆丹 |
| 刘成 |

## Schedule

| ID | WBS | Task | Type | Duration | Start | Finish | Total slack | Resources | Work | 关键产出物 |
| --- | --- | --- | --- | --- | --- | --- | --- | --- | --- | --- |
| 1 | 1 | **立信二期（新进员工+部门/分所培训）** |  | 1d? | 2009-11-16 | 2009-11-17 |  | 张艾燕 | 5216h |  |
| 2 | 1.1 | **需求阶段** |  | 1d? | 2009-11-16 | 2009-11-17 |  | 张艾燕 | 776h |  |
| 3 | 1.1.1 | **新进员工培训需求设计** |  | 5d | 2013-06-27 | 2013-07-03 |  | 李佳博; 张艾燕 | 320h | 原型、流程、需求规格说明书 |
| 4 | 1.1.1.1 | 培训管理员端 | manual | 5d | 2013-06-27 | 2013-07-03 |  | 李佳博; 张艾燕 | 80h |  |
| 5 | 1.1.1.2 | 学员端 | manual | 5d | 2013-06-27 | 2013-07-03 |  | 李佳博; 张艾燕 | 80h |  |
| 6 | 1.1.1.3 | 讲师端 | manual | 5d | 2013-06-27 | 2013-07-03 |  | 李佳博; 张艾燕 | 80h |  |
| 7 | 1.1.2 | **部门/分所培训需求设计** |  | 12d | 2013-07-04 | 2013-07-19 |  | 张艾燕 | 448h |  |
| 8 | 1.1.2.1 | 培训管理 | manual | 9d | 2013-07-08 | 2013-07-19 |  | 张艾燕; 郑汇慧 | 144h |  |
| 9 | 1.1.2.2 | 部门自学 | manual | 10d | 2013-07-08 | 2013-07-19 |  | 郑汇慧; 张艾燕 | 160h |  |
| 10 | 1.1.2.3 | 同步视频转播 | manual | 3d | 2013-07-11 | 2013-07-16 |  | 陆丹; 张艾燕 | 48h |  |
| 11 | 1.2 | **设计阶段** |  | 1d? | 2009-11-16 | 2009-11-17 |  | 郁青; 钱敏珠 | 32h |  |
| 12 | 1.2.1 | ui设计（部分页面） | manual | 1d? | 2009-11-16 | 2009-11-17 |  | 郁青 | 8h |  |
| 13 | 1.2.2 | 界面设计（部分微调） | manual | 1d? | 2009-11-16 | 2009-11-17 |  | 钱敏珠 | 8h |  |
| 14 | 1.3 | **开发阶段** |  | 37d | 2013-07-01 | 2013-08-20 |  | 孙三友 | 2396h |  |
| 15 | 1.3.1 | **新进员工培训** |  | 17d | 2013-07-01 | 2013-07-23 |  |  | 472h |  |
| 16 | 1.3.1.1 | **培训管理员端** |  | 6.88d | 2013-07-02 | 2013-07-10 | 0d |  | 256h |  |
| 17 | 1.3.1.1.1 | 新员工管理 | manual | 2d | 2013-07-02 | 2013-07-03 |  | 惠洪浩 | 16h |  |
| 18 | 1.3.1.1.2 | 班级管理 | manual | 3d | 2013-07-02 | 2013-07-04 |  | 袁兴堂 | 24h |  |
| 19 | 1.3.1.1.3 | 教室管理 | manual | 2d | 2013-07-02 | 2013-07-03 |  | 陈麟 | 16h |  |
| 20 | 1.3.1.1.4 | 课程管理 | manual | 4d | 2013-07-02 | 2013-07-05 |  | 孙三友; 葛昌川; 华明琪 | 96h |  |
| 21 | 1.3.1.1.5 | 综合评分 | manual | 2d | 2013-07-02 | 2013-07-03 |  | 毛佳源 | 16h |  |
| 22 | 1.3.1.1.6 | 评价管理，评价题目管理 | manual | 1d | 2013-07-04 | 2013-07-04 |  | 惠洪浩 | 8h |  |
| 23 | 1.3.1.1.7 | 考勤管理 | manual | 3d | 2013-07-08 | 2013-07-10 |  | 葛昌川 | 24h |  |
| 24 | 1.3.1.1.8 | 考勤客户端 | manual | 3d | 2013-07-08 | 2013-07-10 |  | 孙三友 | 24h |  |
| 25 | 1.3.1.1.9 | 查询统计 | manual | 2d | 2013-07-04 | 2013-07-05 |  | 毛佳源; 惠洪浩 | 32h |  |

Notes:
- 12: 统一风格已定
- 13: 统一风格已定

| ID | WBS | Task | Type | Duration | Start | Finish | Total slack | Resources | Work |
| --- | --- | --- | --- | --- | --- | --- | --- | --- | --- |
| 26 | 1.3.1.2 | **讲师** |  | 4.88d | 2013-07-04 | 2013-07-10 | 0d |  | 72h |
| 27 | 1.3.1.2.1 | 我的课程 | manual | 5d | 2013-07-04 | 2013-07-10 |  | 陈麟 | 40h |
| 28 | 1.3.1.2.2 | 我的评价 | manual | 4d | 2013-07-05 | 2013-07-10 |  | 袁兴堂 | 32h |
| 29 | 1.3.1.3 | **学员** |  | 4.88d | 2013-07-08 | 2013-07-13 | 0d |  | 112h |
| 30 | 1.3.1.3.1 | 我的课程 | manual | 3d | 2013-07-08 | 2013-07-10 |  | 毛佳源; 惠洪浩 | 48h |
| 31 | 1.3.1.3.2 | 我的在线考试 | manual | 3d | 2013-07-08 | 2013-07-10 |  | 华明琪 | 24h |
| 32 | 1.3.1.3.3 | 我的评价 | manual | 3d | 2013-07-11 | 2013-07-13 |  | 陈麟 | 24h |
| 33 | 1.3.1.3.4 | 我的综合评定 | manual | 2d | 2013-07-11 | 2013-07-12 |  | 袁兴堂 | 16h |
| 34 | 1.3.1.4 | HR/部门负责人 | manual | 1d? | 2013-07-01 | 2013-07-02 |  |  |  |
| 35 | 1.3.1.5 | 综合评定 | manual | 2d | 2013-07-15 | 2013-07-16 |  | 陈麟; 袁兴堂 | 32h |
| 36 | 1.3.2 | **部门/分所视频转播** |  | 6d | 2013-07-17 | 2013-07-24 |  |  | 245h |
| 37 | 1.3.2.1 | **视频同步转播** |  | 3.88d | 2013-07-19 | 2013-07-24 | 0d |  | 245h |
| 38 | 1.3.2.1.1 | **课程列表** |  | 3d | 2013-07-19 | 2013-07-23 |  | 刘天琛 | 40h |
| 39 | 1.3.2.1.1.1 | 查看课程详情 | manual | 2d | 2013-07-22 | 2013-07-23 |  | 刘天琛 | 16h |
| 40 | 1.3.2.1.2 | **我的课程** |  | 4d | 2013-07-19 | 2013-07-24 |  |  | 80h |
| 41 | 1.3.2.1.2.1 | **我的已预订课程** |  | 2d | 2013-07-19 | 2013-07-22 |  | 毛佳源 | 24h |
| 42 | 1.3.2.1.2.1.1 | 课程详情 | manual | 1d | 2013-07-22 | 2013-07-22 |  | 毛佳源 | 8h |
| 43 | 1.3.2.1.2.2 | **我的可预订详情** |  | 2d | 2013-07-23 | 2013-07-24 |  | 毛佳源 | 24h |
| 44 | 1.3.2.1.2.2.1 | 课程详情 | manual | 1d | 2013-07-24 | 2013-07-24 |  | 毛佳源 | 8h |
| 45 | 1.3.2.1.2.3 | **转播课程** |  | 3d | 2013-07-19 | 2013-07-23 |  | 袁兴堂 | 32h |
| 46 | 1.3.2.1.2.3.1 | 课程详情 | manual | 1d | 2013-07-23 | 2013-07-23 |  | 袁兴堂 | 8h |
| 47 | 1.3.2.1.3 | **考勤管理** |  | 2.88d | 2013-07-19 | 2013-07-23 | 0d | 葛昌川 | 86h |
| 48 | 1.3.2.1.3.1 | 考勤管理详情 | manual | 3d | 2013-07-19 | 2013-07-23 |  | 葛昌川 | 24h |
| 49 | 1.3.2.1.3.2 | 差异表 | manual | 1d | 2013-07-23 | 2013-07-23 |  | 葛昌川 | 8h |

| ID | WBS | Task | Type | Duration | Start | Finish | Total slack | Resources | Work |
| --- | --- | --- | --- | --- | --- | --- | --- | --- | --- |
| 50 | 1.3.2.1.3.3 | **考勤审批管理** |  | 1.88d | 2013-07-22 | 2013-07-23 | 0d | 孙三友 | 31h |
| 51 | 1.3.2.1.3.3.1 | 审批详情 | manual | 2d | 2013-07-22 | 2013-07-23 |  | 孙三友 | 16h |
| 52 | 1.3.2.1.4 | **我的学时及考勤获取** |  | 1.88d | 2013-07-22 | 2013-07-23 | 0d | 惠洪浩 | 31h |
| 53 | 1.3.2.1.4.1 | 详情 | manual | 2d | 2013-07-22 | 2013-07-23 |  | 惠洪浩 | 16h |
| 54 | 1.3.2.1.5 | **部门/分所员工学时及考勤获取** |  | 1d | 2013-07-24 | 2013-07-24 |  | 惠洪浩 | 8h |
| 55 | 1.3.2.1.5.1 | 个人学时详情 | milestone, manual | 0d | 2013-07-24 | 2013-07-24 |  | 惠洪浩 |  |
| 56 | 1.3.3 | **部门/分所培训** |  | 18d | 2013-07-01 | 2013-07-25 |  |  | 1383h |
| 57 | 1.3.3.1 | **总所负责人** |  | 8.88d | 2013-08-01 | 2013-08-13 | 0d |  | 200h |
| 58 | 1.3.3.1.1 | 部门开放至全所审批 | manual | 1d | 2013-08-05 | 2013-08-06 |  | 袁兴堂 | 8h |
| 59 | 1.3.3.1.2 | 发布公告 | manual | 2d | 2013-08-01 | 2013-08-02 |  | 刘天琛 | 16h |
| 60 | 1.3.3.1.3 | **考勤审批** |  | 2d | 2013-08-08 | 2013-08-09 |  | 刘天琛 | 32h |
| 61 | 1.3.3.1.3.1 | 审批详情 | manual | 2d | 2013-08-08 | 2013-08-09 |  | 刘天琛 | 16h |
| 62 | 1.3.3.1.4 | **参数配置** |  | 1d | 2013-08-05 | 2013-08-05 |  | 刘天琛 | 48h |
| 63 | 1.3.3.1.4.1 | 学时折算分布 | manual | 1d | 2013-08-05 | 2013-08-05 |  | 刘天琛 | 8h |
| 64 | 1.3.3.1.4.2 | 部门培训负责人设定级别 | manual | 1d | 2013-08-05 | 2013-08-05 |  | 刘天琛 | 8h |
| 65 | 1.3.3.1.4.3 | 年度计划与课程关联配置 | manual | 1d | 2013-08-05 | 2013-08-05 |  | 刘天琛 | 8h |
| 66 | 1.3.3.1.4.4 | 参加课后评估获取奖励学时 | manual | 1d | 2013-08-05 | 2013-08-05 |  | 刘天琛 | 8h |
| 67 | 1.3.3.1.4.5 | 是否需要月度大纲 | manual | 1d | 2013-08-05 | 2013-08-05 |  | 刘天琛 | 8h |
| 68 | 1.3.3.1.5 | **年度计划跟踪-部门/分所** |  | 2d | 2013-08-12 | 2013-08-13 |  | 葛昌川 | 32h |
| 69 | 1.3.3.1.5.1 | 查看明细 | manual | 2d | 2013-08-12 | 2013-08-13 |  | 葛昌川 | 16h |
| 70 | 1.3.3.1.6 | **开课详情-部门/分所自学** |  | 2d | 2013-08-07 | 2013-08-08 |  | 袁兴堂 | 32h |
| 71 | 1.3.3.1.6.1 | 查看详细-课程详情 | manual | 2d | 2013-08-07 | 2013-08-08 |  | 袁兴堂 | 16h |
| 72 | 1.3.3.1.7 | **开课详情-部门/分所开发至全所** |  | 2d | 2013-08-09 | 2013-08-12 |  | 袁兴堂 | 32h |
| 73 | 1.3.3.1.7.1 | 查看详细 | manual | 2d | 2013-08-09 | 2013-08-12 |  | 袁兴堂 | 16h |

| ID | WBS | Task | Type | Duration | Start | Finish | Resources | Work |
| --- | --- | --- | --- | --- | --- | --- | --- | --- |
| 74 | 1.3.3.2 | **培训负责人** |  | 3d | 2013-08-05 | 2013-08-07 | 惠洪浩 | 880h |
| 75 | 1.3.3.2.1 | **培训需求管理** |  | 3d | 2013-08-05 | 2013-08-07 | 惠洪浩 | 144h |
| 76 | 1.3.3.2.1.1 | 问卷模板管理 | manual | 3d | 2013-08-05 | 2013-08-07 | 惠洪浩 | 24h |
| 77 | 1.3.3.2.1.2 | **问卷管理** |  | 3d | 2013-08-05 | 2013-08-07 | 惠洪浩 | 48h |
| 78 | 1.3.3.2.1.2.1 | 新建调查 | manual | 3d | 2013-08-05 | 2013-08-07 | 惠洪浩 | 24h |
| 79 | 1.3.3.2.1.3 | **问卷汇总** |  | 3d | 2013-08-05 | 2013-08-07 | 惠洪浩 | 48h |
| 80 | 1.3.3.2.1.3.1 | 汇总明细 | manual | 3d | 2013-08-05 | 2013-08-07 | 惠洪浩 | 24h |
| 81 | 1.3.3.2.2 | **培训计划管理** |  | 12d | 2013-08-05 | 2013-08-21 |  | 336h |
| 82 | 1.3.3.2.2.1 | 新建年度计划 | manual | 5d | 2013-08-05 | 2013-08-09 | 葛昌川 | 40h |
| 83 | 1.3.3.2.2.2 | **查看年度计划** |  | 5d | 2013-08-05 | 2013-08-09 | 葛昌川 | 160h |
| 84 | 1.3.3.2.2.2.1 | 查看年度计划-联合上报 | manual | 5d | 2013-08-05 | 2013-08-09 | 葛昌川 | 40h |
| 85 | 1.3.3.2.2.2.2 | 查看年度计划-被联合 | manual | 5d | 2013-08-05 | 2013-08-09 | 葛昌川 | 40h |
| 86 | 1.3.3.2.2.2.3 | 查看年度计划-单体上报 | manual | 5d | 2013-08-05 | 2013-08-09 | 葛昌川 | 40h |
| 87 | 1.3.3.2.2.3 | 接收或拒绝联合上报 | manual | 5d | 2013-08-05 | 2013-08-09 | 葛昌川 | 40h |
| 88 | 1.3.3.2.2.4 | **新增月度大纲** |  | 3d | 2013-08-08 | 2013-08-12 | 惠洪浩 | 96h |
| 89 | 1.3.3.2.2.4.1 | 月度大纲分解 | manual | 3d | 2013-08-08 | 2013-08-12 | 惠洪浩 | 24h |
| 90 | 1.3.3.2.2.4.2 | 差异对比 | manual | 3d | 2013-08-08 | 2013-08-12 | 惠洪浩 | 24h |
| 91 | 1.3.3.2.2.4.3 | 查看月度大纲 | manual | 3d | 2013-08-08 | 2013-08-12 | 惠洪浩 | 24h |
| 92 | 1.3.3.2.3 | **课程列表-部门自学** |  | 3d | 2013-08-05 | 2013-08-07 | 毛佳源 | 72h |
| 93 | 1.3.3.2.3.1 | 课程开设-部门自学 | manual | 3d | 2013-08-05 | 2013-08-07 | 毛佳源 | 24h |
| 94 | 1.3.3.2.3.2 | 查看课程详情-部门自学 | manual | 3d | 2013-08-05 | 2013-08-07 | 毛佳源 | 24h |
| 95 | 1.3.3.2.4 | 课程列表-分所自学 | manual | 3d | 2013-08-05 | 2013-08-07 | 毛佳源 | 24h |
| 96 | 1.3.3.2.5 | **课程列表-开放至全所** |  | 3d | 2013-08-05 | 2013-08-08 | 毛佳源 | 72h |
| 97 | 1.3.3.2.5.1 | 课程开设-开放至全所 | manual | 3d | 2013-08-08 | 2013-08-12 | 毛佳源 | 24h |
| 98 | 1.3.3.2.5.2 | 查看课程详情-开放至全所 | manual | 3d | 2013-08-08 | 2013-08-12 | 毛佳源 | 24h |
| 99 | 1.3.3.2.6 | 课程指定查询 | manual | 1d | 2013-08-13 | 2013-08-13 | 袁兴堂 | 8h |

| ID | WBS | Task | Type | Duration | Start | Finish | Total slack | Resources | Work |
| --- | --- | --- | --- | --- | --- | --- | --- | --- | --- |
| 100 | 1.3.3.2.7 | **考试管理** |  | 4d | 2013-08-08 | 2013-08-13 |  | 孙三友 | 96h |
| 101 | 1.3.3.2.7.1 | 试题管理 | manual | 4d | 2013-08-08 | 2013-08-13 |  | 孙三友 | 32h |
| 102 | 1.3.3.2.7.2 | 试卷管理 | manual | 4d | 2013-08-08 | 2013-08-13 |  | 孙三友 | 32h |
| 103 | 1.3.3.2.8 | **考勤管理** |  | 2d | 2013-08-15 | 2013-08-16 |  | 葛昌川 | 32h |
| 104 | 1.3.3.2.8.1 | 考勤详情 | manual | 2d | 2013-08-15 | 2013-08-16 |  | 葛昌川 | 16h |
| 105 | 1.3.3.2.9 | 查看差异表 | manual | 2d | 2013-08-15 | 2013-08-16 |  | 葛昌川 | 16h |
| 106 | 1.3.3.2.10 | **部门员工学时获得情况查询** |  | 3d | 2013-08-13 | 2013-08-15 |  | 惠洪浩 | 48h |
| 107 | 1.3.3.2.10.1 | 查看详情 | manual | 3d | 2013-08-13 | 2013-08-15 |  | 惠洪浩 | 24h |
| 108 | 1.3.3.2.11 | 我开放的集中授课 | manual | 1d | 2013-08-14 | 2013-08-14 |  | 袁兴堂 | 8h |
| 109 | 1.3.3.3 | **部门分所负责人** |  | 3d | 2013-08-05 | 2013-08-07 |  | 孙三友 | 55h |
| 110 | 1.3.3.3.1 | **上级指定管理** |  | 1.88d | 2013-08-05 | 2013-08-06 | 0d | 孙三友 | 31h |
| 111 | 1.3.3.3.1.1 | 上级指定编辑 | manual | 2d | 2013-08-05 | 2013-08-06 |  | 孙三友 | 16h |
| 112 | 1.3.3.4 | 设定培训负责人 | manual | 1d | 2013-08-07 | 2013-08-07 |  | 孙三友 | 8h |
| 113 | 1.3.3.5 | **参数配置页面** |  | 2d | 2013-08-06 | 2013-08-07 |  | 刘天琛 | 112h |
| 114 | 1.3.3.5.1 | 培训需求上报时间设定 | manual | 2d | 2013-08-06 | 2013-08-07 |  | 刘天琛 | 16h |
| 115 | 1.3.3.5.2 | 课前建议、课后评估的开放时间 | manual | 2d | 2013-08-06 | 2013-08-07 |  | 刘天琛 | 16h |
| 116 | 1.3.3.5.3 | 在线测试允许答题时间 | manual | 2d | 2013-08-06 | 2013-08-07 |  | 刘天琛 | 16h |
| 117 | 1.3.3.5.4 | 在线测试允许最大次数 | manual | 2d | 2013-08-06 | 2013-08-07 |  | 刘天琛 | 16h |
| 118 | 1.3.3.5.5 | 全年在线测试完成次数 | manual | 2d | 2013-08-06 | 2013-08-07 |  | 刘天琛 | 16h |
| 119 | 1.3.3.5.6 | 全年课程退订次数 | manual | 2d | 2013-08-06 | 2013-08-07 |  | 刘天琛 | 16h |
| 120 | 1.3.3.6 | **学员** |  | 4.88d | 2013-08-12 | 2013-08-16 | 0d |  | 112h |
| 121 | 1.3.3.6.1 | **我的需求** |  | 2d | 2013-08-15 | 2013-08-16 |  | 袁兴堂 | 32h |
| 122 | 1.3.3.6.1.1 | 填报需求 | manual | 2d | 2013-08-15 | 2013-08-16 |  | 袁兴堂 | 16h |
| 123 | 1.3.3.6.2 | **我的可预定课程** |  | 2d | 2013-08-13 | 2013-08-14 |  | 毛佳源 | 32h |
| 124 | 1.3.3.6.2.1 | 查看课程详情 | manual | 2d | 2013-08-13 | 2013-08-14 |  | 毛佳源 | 16h |
| 125 | 1.3.3.6.3 | 我的已预订课程 | manual | 1d | 2013-08-15 | 2013-08-15 |  | 毛佳源 | 8h |
| 126 | 1.3.3.6.4 | 我的学时及考勤 | manual | 1d | 2013-08-16 | 2013-08-16 |  | 毛佳源 | 8h |
| 127 | 1.3.3.6.5 | 我的考勤 | manual | 2d | 2013-08-12 | 2013-08-13 |  | 刘天琛 | 16h |
| 128 | 1.3.3.6.6 | 我的课前建议与评估 | manual | 2d | 2013-08-14 | 2013-08-15 |  | 刘天琛 | 16h |
| 129 | 1.3.3.7 | 部门分所首页 | manual | 1d | 2013-08-14 | 2013-08-14 |  | 孙三友 | 8h |
| 130 | 1.3.3.8 | 系统整合 | manual | 1d | 2013-08-15 | 2013-08-15 |  | 孙三友 | 8h |

| ID | WBS | Task | Type | Duration | Start | Finish | Total slack | Resources | Work |
| --- | --- | --- | --- | --- | --- | --- | --- | --- | --- |
| 131 | 1.4 | **测试阶段** |  | 11d | 2013-08-19 | 2013-08-31 |  | 黄蓓 | 1996h |
| 132 | 1.4.1 | **新进员工培训** |  | 17d | 2013-07-09 | 2013-07-31 |  |  | 408h |
| 133 | 1.4.1.1 | **分析、编写需求** |  | 4d | 2013-07-02 | 2013-07-05 |  | 黄蓓; 强盛凌 | 128h |
| 134 | 1.4.1.1.1 | 培训管理员端模块 | manual | 4d | 2013-07-02 | 2013-07-05 |  | 黄蓓 | 32h |
| 135 | 1.4.1.1.2 | 讲师、学员和部门负责人端模块 | manual | 4d | 2013-07-02 | 2013-07-05 |  | 强盛凌 | 32h |
| 136 | 1.4.1.1.3 | 需求评审 | manual | 1d | 2013-07-05 | 2013-07-05 |  |  |  |
| 137 | 1.4.1.2 | **编写测试用例** |  | 3d | 2013-07-08 | 2013-07-10 |  | 黄蓓; 强盛凌 | 96h |
| 138 | 1.4.1.2.1 | 培训管理员端模块 | manual | 3d | 2013-07-08 | 2013-07-10 |  | 黄蓓 | 24h |
| 139 | 1.4.1.2.2 | 讲师、学员和部门负责人端模块 | manual | 3d | 2013-07-08 | 2013-07-10 |  | 强盛凌 | 24h |
| 140 | 1.4.1.3 | **执行测试** |  | 11.88d | 2013-07-10 | 2013-07-25 | 0d |  | 184h |
| 141 | 1.4.1.3.1 | 冒烟测试 | manual | 1d | 2013-07-10 | 2013-07-10 |  | 黄蓓 | 8h |
| 142 | 1.4.1.3.2 | 新员工管理、教室管理、讲师（我的课程、我的评价）、我的课程（学员） | manual | 7d | 2013-07-11 | 2013-07-19 |  | 强盛凌 | 56h |
| 143 | 1.4.1.3.3 | 班级管理、课程管理、综合评分、评价管理、考勤管理、查询统计、部门负责人综合评定 | manual | 7d | 2013-07-11 | 2013-07-19 |  | 黄蓓 | 56h |
| 144 | 1.4.1.3.4 | 回归测试、页面美观和浏览器兼容性测试 | manual | 3d | 2013-07-22 | 2013-07-24 |  | 黄蓓; 强盛凌 | 48h |
| 145 | 1.4.1.3.5 | 版本发布测试 | manual | 1d | 2013-07-25 | 2013-07-25 |  | 黄蓓; 强盛凌 | 16h |
| 146 | 1.4.2 | **部门/分所培训** |  | 19d | 2013-07-25 | 2013-08-20 |  | 黄蓓; 强盛凌 | 1500h |
| 147 | 1.4.2.1 | **视频转播** |  | 15.88d | 2013-07-25 | 2013-08-15 | 0d | 黄蓓; 强盛凌 | 526h |
| 148 | 1.4.2.1.1 | 分析、编写需求 | manual | 3d | 2013-07-25 | 2013-07-29 |  | 黄蓓; 强盛凌 | 48h |
| 149 | 1.4.2.1.2 | **执行测试** |  | 13d | 2013-07-30 | 2013-08-15 |  |  | 224h |
| 150 | 1.4.2.1.2.1 | 冒烟测试 | manual | 1d | 2013-07-30 | 2013-07-30 |  | 黄蓓; 强盛凌 | 16h |
| 151 | 1.4.2.1.2.2 | 课程列表、我的课程、考勤管理、我的学时及考勤获取、部门分所员工学时及考勤获取 | manual | 8d | 2013-07-31 | 2013-08-09 |  | 黄蓓; 强盛凌 | 128h |
| 152 | 1.4.2.1.2.3 | 回归测试、页面美观和浏览器兼容性测试 | manual | 5d | 2013-08-10 | 2013-08-15 |  | 黄蓓; 强盛凌 | 80h |
| 153 | 1.4.2.2 | **部门/分所管理自学** |  | 16.88d | 2013-07-29 | 2013-08-20 | 0d | 黄蓓; 强盛凌 | 670h |
| 154 | 1.4.2.2.1 | 分析、编写需求 | manual | 3d | 2013-07-29 | 2013-07-31 |  | 黄蓓; 强盛凌 | 48h |

| ID | WBS | Task | Type | Duration | Start | Finish | Resources | Work |
| --- | --- | --- | --- | --- | --- | --- | --- | --- |
| 155 | 1.4.2.2.2 | **执行测试** |  | 11d | 2013-08-06 | 2013-08-20 | 黄蓓; 强盛凌 | 352h |
| 156 | 1.4.2.2.2.1 | 冒烟测试 | manual | 1d | 2013-08-06 | 2013-08-06 | 黄蓓; 强盛凌 | 16h |
| 157 | 1.4.2.2.2.2 | 功能测试 | manual | 7d | 2013-08-07 | 2013-08-15 | 黄蓓; 强盛凌 | 112h |
| 158 | 1.4.2.2.2.3 | 回归测试、页面美观和浏览器兼容性测试 | manual | 2d | 2013-08-16 | 2013-08-19 | 黄蓓; 强盛凌 | 32h |
| 159 | 1.4.2.2.2.4 | 版本发布测试 | manual | 1d | 2013-08-20 | 2013-08-20 | 黄蓓; 强盛凌 | 16h |
| 160 | 1.5 | **实施阶段** |  | 1d | 2009-11-16 | 2009-11-17 | 刘成 | 8h |
| 161 | 1.5.1 | 新进员工培训 | manual | 2d | 2013-09-01 | 2013-09-02 |  |  |
| 162 | 1.5.2 | 部门/分所培训 | manual | 2d | 2013-09-01 | 2013-09-02 |  |  |
